# Разработка карты города

How a schedule from MS Project changed from version to version. A marks actual dates.

## Version 1 (data date 2023-05-06, saved 2023-04-10, file task_1.mpp)

Note of the change: init

| ID | WBS | Task | Duration | Start | Finish | Predecessors | Complete | Total float | Constraint |
| --- | --- | --- | --- | --- | --- | --- | --- | --- | --- |
| 1 |  | Начало проекта | 0w | 2023-03-01 09:00 A | 2023-03-01 09:00 A |  | 100% |  |  |
| 2 | 2 | **Создание интерфейса** | 84.73d | 2023-03-01 10:00 A | 2023-07-04 16:52 | 1 | 77% | 0d |  |
| 3 | 2.1 | **Разработка дизайна интерфейса** | 36.62d | 2023-03-01 10:00 A | 2023-04-21 16:00 A |  | 100% |  |  |
| 4 |  | Разработка 2D графических элементов | 3w | 2023-03-01 10:00 A | 2023-03-23 13:00 A |  | 100% |  |  |
| 5 |  | Разработка 3D графических элементов | 2w | 2023-03-01 10:00 A | 2023-03-16 11:00 A | 4SS | 100% |  |  |
| 6 |  | Создание заставки | 26d | 2023-03-16 14:00 A | 2023-04-21 16:00 A | 5 | 100% |  |  |
| 7 |  | Программирование интерфейса | 15d | 2023-06-13 16:52 | 2023-07-04 16:52 | 3, 12 |  | 0d |  |
| 8 | 3 | **Построение базы объектов** | 85.12d | 2023-03-23 15:00 A | 2023-07-26 16:00 |  | 36% | 4.44d |  |
| 9 |  | Анализ и построение структуры базы объектов | 2w | 2023-03-23 15:00 A | 2023-04-06 16:00 A |  | 100% |  |  |
| 10 |  | Программирование средств обработки базы объектов | 3w | 2023-04-06 16:00 A | 2023-04-27 16:00 A | 9 | 100% |  |  |
| 11 |  | Наполнение базы объектов | 60d | 2023-04-27 16:00 A | 2023-07-26 16:00 | 10 | 9% | 4.44d |  |
| 12 | 4 | **Создание ядра GIS** | 69.73d | 2023-03-01 10:00 A | 2023-06-13 16:52 |  | 67% | 0d |  |
| 13 |  | Анализ и проектирование ядра | 3.05w | 2023-03-01 10:00 A | 2023-03-23 13:00 A |  | 100% |  |  |
| 14 |  | Создание модели ядра | 2.42w | 2023-03-23 14:00 A | 2023-04-10 14:56 A | 13 | 100% |  |  |
| 15 |  | Тестирование модели ядра | 1w | 2023-04-06 14:49 A | 2023-04-13 14:49 A | 14 | 100% |  |  |
| 16 |  | Создание рабочей версии ядра | 7.85w | 2023-04-13 14:49 A | 2023-06-13 16:52 | 15 | 39% | 0d |  |
| 17 |  | Создание мультимедиа – наполнения | 6w | 2023-04-06 16:00 A | 2023-05-24 13:00 | 3 | 66% | 48.69d |  |
| 18 |  | Создание справочной системы | 10d | 2023-07-14 10:52 | 2023-07-28 11:52 | 7 |  | 2.83d |  |
| 19 | 7 | **Создание руководства пользователя** | 17.25d | 2023-06-20 16:52 | 2023-07-14 09:52 | 7FS-10d |  | 0d |  |
| 20 |  | Разработка дизайна руководства | 1w | 2023-06-20 16:52 | 2023-06-27 16:52 |  |  | 0d |  |
| 21 |  | Написание руководства пользователя | 15d | 2023-06-22 16:52 | 2023-07-14 09:52 | 20SS+2d |  | 0d |  |
| 22 | 8 | **Создание web – сайта и поддержка** | 23.23d | 2023-06-22 16:52 | 2023-07-26 09:45 |  |  | 0d |  |
| 23 |  | Разработка структуры сайта | 1d | 2023-06-22 16:52 | 2023-06-23 16:52 | 21SS |  | 0d |  |
| 24 |  | Разработка дизайна сайта | 1.4w | 2023-06-23 16:52 | 2023-07-04 16:45 | 23 |  | 0d |  |
| 25 |  | Наполнение сайта | 3w | 2023-07-04 16:45 | 2023-07-26 09:45 | 24 |  | 0d |  |
| 26 |  | Тестирование сайта | 2.02w | 2023-07-19 09:45 | 2023-08-02 10:30 | 22FS-1w |  | 0d |  |
| 27 |  | Сдача сайта в эксплуатацию | 0w | 2023-08-02 10:30 | 2023-08-02 10:30 | 26 |  | 0d |  |
| 28 | 11 | **Совещание** | 105.12d | 2023-03-01 09:00 A | 2023-08-02 10:00 |  | 43% | 0d |  |
| 29 |  | Совещание 1 | 1h | 2023-03-01 09:00 A | 2023-03-01 10:00 A |  | 100% |  | start no earlier than 2023-03-01 09:00 |
| 30 |  | Совещание 2 | 1h | 2023-03-08 09:00 A | 2023-03-08 10:00 A |  | 100% |  | start no earlier than 2023-03-08 09:00 |
| 31 |  | Совещание 3 | 1h | 2023-03-15 09:00 A | 2023-03-15 10:00 A |  | 100% |  | start no earlier than 2023-03-15 09:00 |
| 32 |  | Совещание 4 | 1h | 2023-03-22 09:00 A | 2023-03-22 10:00 A |  | 100% |  | start no earlier than 2023-03-22 09:00 |
| 33 |  | Совещание 5 | 1h | 2023-03-29 09:00 A | 2023-03-29 10:00 A |  | 100% |  | start no earlier than 2023-03-29 09:00 |
| 34 |  | Совещание 6 | 1h | 2023-04-05 09:00 A | 2023-04-05 10:00 A |  | 100% |  | start no earlier than 2023-04-05 09:00 |
| 35 |  | Совещание 7 | 1h | 2023-04-12 09:00 A | 2023-04-12 10:00 A |  | 100% |  | start no earlier than 2023-04-12 09:00 |
| 36 |  | Совещание 8 | 1h | 2023-04-19 09:00 A | 2023-04-19 10:00 A |  | 100% |  | start no earlier than 2023-04-19 09:00 |
| 37 |  | Совещание 9 | 1h | 2023-04-26 09:00 A | 2023-04-26 10:00 A |  | 100% |  | start no earlier than 2023-04-26 09:00 |
| 38 |  | Совещание 10 | 1h | 2023-05-03 09:00 A | 2023-05-03 10:00 A |  | 100% |  | start no earlier than 2023-05-03 09:00 |
| 39 |  | Совещание 11 | 1h | 2023-05-10 09:00 | 2023-05-10 10:00 |  |  |  | start no earlier than 2023-05-10 09:00 |
| 40 |  | Совещание 12 | 1h | 2023-05-17 09:00 | 2023-05-17 10:00 |  |  |  | start no earlier than 2023-05-17 09:00 |
| 41 |  | Совещание 13 | 1h | 2023-05-24 09:00 | 2023-05-24 10:00 |  |  |  | start no earlier than 2023-05-24 09:00 |
| 42 |  | Совещание 14 | 1h | 2023-05-31 09:00 | 2023-05-31 10:00 |  |  |  | start no earlier than 2023-05-31 09:00 |
| 43 |  | Совещание 15 | 1h | 2023-06-07 09:00 | 2023-06-07 10:00 |  |  |  | start no earlier than 2023-06-07 09:00 |
| 44 |  | Совещание 16 | 1h | 2023-06-14 09:00 | 2023-06-14 10:00 |  |  |  | start no earlier than 2023-06-14 09:00 |
| 45 |  | Совещание 17 | 1h | 2023-06-21 09:00 | 2023-06-21 10:00 |  |  |  | start no earlier than 2023-06-21 09:00 |
| 46 |  | Совещание 18 | 1h | 2023-06-28 09:00 | 2023-06-28 10:00 |  |  |  | start no earlier than 2023-06-28 09:00 |
| 47 |  | Совещание 19 | 1h | 2023-07-05 09:00 | 2023-07-05 10:00 |  |  |  | start no earlier than 2023-07-05 09:00 |
| 48 |  | Совещание 20 | 1h | 2023-07-12 09:00 | 2023-07-12 10:00 |  |  |  | start no earlier than 2023-07-12 09:00 |
| 49 |  | Совещание 21 | 1h | 2023-07-19 09:00 | 2023-07-19 10:00 |  |  |  | start no earlier than 2023-07-19 09:00 |
| 50 |  | Совещание 22 | 1h | 2023-07-26 09:00 | 2023-07-26 10:00 |  |  |  | start no earlier than 2023-07-26 09:00 |
| 51 |  | Совещание 23 | 1h | 2023-08-02 09:00 | 2023-08-02 10:00 |  |  |  | start no earlier than 2023-08-02 09:00 |
| 52 | 12 | **Повышение квалификации программистов** | 10.5d | 2023-04-03 09:00 A | 2023-04-17 13:00 A |  | 100% |  |  |
| 53 |  | Повышение квалификации программистов 1 | 4h | 2023-04-03 09:00 A | 2023-04-03 13:00 A |  | 100% |  | start no earlier than 2023-04-03 09:00 |
| 54 |  | Повышение квалификации программистов 2 | 4h | 2023-04-04 09:00 A | 2023-04-04 13:00 A |  | 100% |  | start no earlier than 2023-04-04 09:00 |
| 55 |  | Повышение квалификации программистов 3 | 4h | 2023-04-05 09:00 A | 2023-04-05 13:00 A |  | 100% |  | start no earlier than 2023-04-05 09:00 |
| 56 |  | Повышение квалификации программистов 4 | 4h | 2023-04-06 09:00 A | 2023-04-06 13:00 A |  | 100% |  | start no earlier than 2023-04-06 09:00 |
| 57 |  | Повышение квалификации программистов 5 | 4h | 2023-04-07 09:00 A | 2023-04-07 13:00 A |  | 100% |  | start no earlier than 2023-04-07 09:00 |
| 58 |  | Повышение квалификации программистов 6 | 4h | 2023-04-10 09:00 A | 2023-04-10 13:00 A |  | 100% |  | start no earlier than 2023-04-10 09:00 |
| 59 |  | Повышение квалификации программистов 7 | 4h | 2023-04-11 09:00 A | 2023-04-11 13:00 A |  | 100% |  | start no earlier than 2023-04-11 09:00 |
| 60 |  | Повышение квалификации программистов 8 | 4h | 2023-04-12 09:00 A | 2023-04-12 13:00 A |  | 100% |  | start no earlier than 2023-04-12 09:00 |
| 61 |  | Повышение квалификации программистов 9 | 4h | 2023-04-13 09:00 A | 2023-04-13 13:00 A |  | 100% |  | start no earlier than 2023-04-13 09:00 |
| 62 |  | Повышение квалификации программистов 10 | 4h | 2023-04-14 09:00 A | 2023-04-14 13:00 A |  | 100% |  | start no earlier than 2023-04-14 09:00 |
| 63 |  | Повышение квалификации программистов 11 | 4h | 2023-04-17 09:00 A | 2023-04-17 13:00 A |  | 100% |  | start no earlier than 2023-04-17 09:00 |

## Version 2 (saved 2023-04-11, file task_3.mpp)

Note of the change: init

Last finish 2023-08-02 → 2023-08-18 (+16d). Complete tasks 30 → 0.

Added:

| ID | Task | Duration | Start | Finish | Constraint | Resources |
| --- | --- | --- | --- | --- | --- | --- |
| 9 | **Программирование** | 102.5d | 2023-03-23 12:00 | 2023-08-18 17:00 |  |  |
| 14 | **Проектирование** | 25.5d | 2023-03-01 10:00 | 2023-04-06 15:00 |  |  |
| 53 | Совещание 24 | 1h | 2023-08-09 09:00 | 2023-08-09 10:00 | start no earlier than 2023-08-09 09:00 | 3D аниматор; Web-дизайнер; Ведущий программист; Мультимедиа-корреспондент; Системный аналитик; Технический писатель; Художник-дизайнер |

Removed: 22 Создание web – сайта и поддержка; 52 Повышение квалификации программистов; 53 Повышение квалификации программистов 1; 54 Повышение квалификации программистов 2; 55 Повышение квалификации программистов 3; 56 Повышение квалификации программистов 4; 57 Повышение квалификации программистов 5; 58 Повышение квалификации программистов 6; 59 Повышение квалификации программистов 7; 60 Повышение квалификации программистов 8; 61 Повышение квалификации программистов 9; 62 Повышение квалификации программистов 10; 63 Повышение квалификации программистов 11

Changed:

| ID | Task | Start | Finish | Duration | Complete | Total float | Predecessors | Other |
| --- | --- | --- | --- | --- | --- | --- | --- | --- |
| 1 | Начало проекта | 2023-03-01 09:00 A → 2023-03-01 09:00 | 2023-03-01 09:00 A → 2023-03-01 09:00 |  | 100% → 0% | none → 22.38d |  |  |
| 2 | **Дизайн** | 2023-03-01 10:00 A → 2023-03-01 10:00 | 2023-07-04 16:52 → 2023-04-13 16:00 (-82d) | 84.73d → 30.62d | 77% → 0% | 0d → 22.25d |  | was named Создание интерфейса; baseline start 2023-03-01 10:00 → 2023-03-01 09:00; baseline finish 2023-07-14 11:29 → 2023-08-08 18:00 |
| 3 | **Разработка дизайна интерфейса** | 2023-03-01 10:00 A → 2023-03-01 10:00 | 2023-04-21 16:00 A → 2023-04-13 16:00 (-8d) | 36.62d → 30.62d | 100% → 0% | none → 22.12d |  | baseline start 2023-03-01 10:00 → 2023-03-01 09:00; baseline finish 2023-04-06 16:00 → 2023-04-05 18:00 |
| 4 | Разработка 2D графических элементов | 2023-03-01 10:00 A → 2023-03-01 10:00 | 2023-03-23 13:00 A → 2023-03-23 12:00 |  | 100% → 0% | none → 22.25d |  | baseline start 2023-03-01 10:00 → 2023-03-01 09:00; baseline finish 2023-03-23 13:00 → 2023-03-22 18:00 |
| 5 | Разработка 3D графических элементов | 2023-03-01 10:00 A → 2023-03-01 10:00 | 2023-03-16 11:00 A → 2023-03-16 11:00 |  | 100% → 0% | none → 22.25d |  | resources 3D аниматор; Художник-дизайнер [20%] → 3D аниматор; baseline start 2023-03-01 10:00 → 2023-03-01 09:00; baseline finish 2023-03-16 12:00 → 2023-03-15 18:00 |
| 6 | Создание заставки | 2023-03-16 14:00 A → 2023-03-16 12:00 | 2023-04-21 16:00 A → 2023-04-13 16:00 (-8d) | 26d → 3w | 100% → 0% | none → 22.12d |  | resources 3D аниматор; Художник-дизайнер [20%] → 3D аниматор; baseline start 2023-03-16 14:00 → 2023-03-16 09:00; baseline finish 2023-04-06 16:00 → 2023-04-05 18:00 |
| 7 | Разработка дизайна сайта | 2023-06-23 16:52 → 2023-03-28 14:00 (-87d) | 2023-07-04 16:45 → 2023-04-06 15:00 (-89d) | 1.4w → 1.43w |  | 0d → 92.25d |  | baseline start 2023-07-05 11:29 → 2023-07-31 09:00; baseline finish 2023-07-14 12:29 → 2023-08-08 18:00 |
| 8 | Разработка дизайна руководства | 2023-06-20 16:52 → 2023-03-23 14:00 (-89d) | 2023-06-27 16:52 → 2023-03-30 13:00 (-89d) |  |  | 0d → 34.38d |  | baseline start 2023-06-30 11:29 → 2023-07-26 09:00; baseline finish 2023-07-07 11:29 → 2023-08-01 18:00 |
| 10 | Программирование средств обработки базы объектов | 2023-04-06 16:00 A → 2023-04-06 15:00 | 2023-04-27 16:00 A → 2023-04-27 15:00 |  | 100% → 0% | none → 17.25d |  | resources Программист#3; Программист#4 → none; baseline start 2023-04-06 16:00 → 2023-04-06 09:00; baseline finish 2023-04-27 16:00 → 2023-04-26 18:00 |
| 11 | Программирование интерфейса | 2023-06-13 16:52 → 2023-04-13 16:00 (-61d) | 2023-07-04 16:52 → 2023-05-05 16:00 (-60d) | 15d → 3w |  | 0d → 22.12d | 3, 22 → 3, 14 | baseline start 2023-06-23 11:29 → 2023-07-19 09:00; baseline finish 2023-07-14 11:29 → 2023-08-08 18:00 |
| 12 | Создание модели ядра | 2023-03-23 14:00 A → 2023-03-23 12:00 | 2023-04-10 14:56 A → 2023-04-27 18:00 (+17d) | 2.42w → 5.12w | 100% → 0% | none → 0d |  | resources Программист#1; Ведущий программист; Программист#2; Программист#3; Программист#4 → Программист#1; Ведущий программист; baseline start 2023-03-23 14:00 → 2023-03-23 09:00; baseline finish 2023-04-06 14:49 → 2023-04-26 18:00 |
| 13 | Создание рабочей версии ядра | 2023-04-13 14:49 A → 2023-06-07 10:00 (+55d) | 2023-06-13 16:52 → 2023-08-18 17:00 (+66d) | 7.85w → 10.35w | 39% → 0% |  |  | resources Программист#1; Программист#2; Ведущий программист; Программист#3; Программист#4; Программист-стажер → Программист#1; Программист#2; Ведущий программист; baseline start 2023-04-13 14:49 → 2023-05-05 09:00; baseline finish 2023-06-23 11:29 → 2023-07-18 18:00 |
| 15 | Анализ и проектирование ядра | 2023-03-01 10:00 A → 2023-03-01 10:00 | 2023-03-23 13:00 A → 2023-03-23 12:00 |  | 100% → 0% | none → 0d |  | baseline start 2023-03-01 10:00 → 2023-03-01 09:00; baseline finish 2023-03-23 13:00 → 2023-03-22 18:00 |
| 16 | Анализ и построение структуры базы объектов | 2023-03-23 15:00 A → 2023-03-23 14:00 | 2023-04-06 16:00 A → 2023-04-06 15:00 |  | 100% → 0% | none → 17.25d |  | baseline start 2023-03-23 15:00 → 2023-03-23 09:00; baseline finish 2023-04-06 16:00 → 2023-04-05 18:00 |
| 17 | Разработка структуры сайта | 2023-06-22 16:52 → 2023-03-27 14:00 (-87d) | 2023-06-23 16:52 → 2023-03-28 13:00 (-87d) |  |  | 0d → 34.38d |  | baseline start 2023-07-04 11:29 → 2023-07-28 09:00; baseline finish 2023-07-05 11:29 → 2023-07-28 18:00 |
| 18 | **Работа с данными** | 2023-03-23 15:00 A → 2023-04-20 16:00 (+28d) | 2023-07-26 16:00 → 2023-07-26 15:00 | 85.12d → 64.88d | 36% → 0% | 4.44d → 17.25d | none → 11FS-10d | was named Построение базы объектов; resources Дополнительный сервер; Собственный сервер → Дополнительный сервер; baseline start 2023-03-23 15:00 → 2023-03-23 09:00; baseline finish 2023-07-26 16:00 → 2023-07-25 18:00 |
| 19 | Наполнение базы объектов | 2023-04-27 16:00 A → 2023-04-27 15:00 | 2023-07-26 16:00 → 2023-07-26 15:00 | 60d → 12w | 9% → 0% | 4.44d → 17.25d |  | baseline start 2023-04-27 16:00 → 2023-04-27 09:00; baseline finish 2023-07-26 16:00 → 2023-07-25 18:00 |
| 20 | Наполнение сайта | 2023-07-04 16:45 → 2023-04-20 16:00 (-75d) | 2023-07-26 09:45 → 2023-05-17 10:00 (-70d) |  |  | 0d → 51.25d | 7 → 8 | baseline start 2023-07-14 12:29 → 2023-08-09 09:00; baseline finish 2023-08-04 15:29 → 2023-08-29 18:00 |
| 21 | Создание мультимедиа – наполнения | 2023-04-06 16:00 A → 2023-04-20 16:00 (+14d) | 2023-05-24 13:00 → 2023-06-07 13:00 (+14d) |  | 66% → 0% | 48.69d → 51.38d |  | baseline start 2023-04-06 16:00 → 2023-04-06 09:00; baseline finish 2023-05-24 13:00 → 2023-05-22 18:00 |
| 22 | **Тестирование** | 2023-03-01 10:00 A → 2023-04-28 09:00 (+58d) | 2023-06-13 16:52 → 2023-06-07 15:00 (-6d) | 69.73d → 25.62d | 67% → 0% |  |  | was named Создание ядра GIS; baseline start 2023-03-01 10:00 → 2023-03-01 09:00; baseline finish 2023-06-23 11:29 → 2023-07-18 18:00 |
| 23 | Тестирование модели ядра | 2023-04-06 14:49 A → 2023-04-28 09:00 (+22d) | 2023-04-13 14:49 A → 2023-05-05 18:00 (+22d) |  | 100% → 0% | none → 0d |  | baseline start 2023-04-06 14:49 → 2023-04-27 09:00; baseline finish 2023-04-13 14:49 → 2023-05-04 18:00 |
| 24 | Тестирование сайта | 2023-07-19 09:45 → 2023-05-10 10:00 (-70d) | 2023-08-02 10:30 → 2023-06-07 15:00 (-56d) | 2.02w → 4.1w |  | 0d → 51.25d | Создание web – сайта и поддержкаFS-1w → 20FS-1w | resources Ведущий программист; Программист#1; Программист#2; Программист-стажер; Программист#3; Программист#4 → Ведущий программист; Программист#1; Программист#2; baseline start 2023-07-28 15:29 → 2023-08-23 09:00; baseline finish 2023-08-28 10:29 → 2023-09-19 18:00 |
| 25 | **Документация** | 2023-06-20 16:52 → 2023-03-27 14:00 (-85d) | 2023-07-14 09:52 → 2023-05-30 16:00 (-45d) | 17.25d → 43.25d |  | 0d → 34.38d | 11FS-10d → none | was named Создание руководства пользователя; baseline start 2023-06-30 11:29 → 2023-07-26 09:00; baseline finish 2023-07-25 14:29 → 2023-08-17 18:00 |
| 26 | Написание руководства пользователя | 2023-06-22 16:52 → 2023-03-27 14:00 (-87d) | 2023-07-14 09:52 → 2023-04-17 16:00 (-88d) | 15d → 3w |  | 0d → 34.38d |  | baseline start 2023-07-04 11:29 → 2023-07-28 09:00; baseline finish 2023-07-25 14:29 → 2023-08-17 18:00 |
| 27 | Создание справочной системы | 2023-07-14 10:52 → 2023-05-05 16:00 (-70d) | 2023-07-28 11:52 → 2023-05-30 16:00 (-59d) | 10d → 3w |  | 2.83d → 57.12d |  | baseline start 2023-07-25 15:29 → 2023-08-17 09:00; baseline finish 2023-08-08 16:29 → 2023-09-06 18:00 |
| 28 | Сдача сайта в эксплуатацию | 2023-08-02 10:30 → 2023-06-07 15:00 (-56d) | 2023-08-02 10:30 → 2023-06-07 15:00 (-56d) |  |  | 0d → 51.25d |  | baseline start 2023-08-28 10:29 → 2023-09-19 18:00; baseline finish 2023-08-28 10:29 → 2023-09-19 18:00 |
| 29 | **Совещание** | 2023-03-01 09:00 A → 2023-03-01 09:00 | 2023-08-02 10:00 → 2023-08-09 10:00 (+7d) | 105.12d → 110.12d | 43% → 0% |  |  | baseline start 2023-03-01 09:00 → none; baseline finish 2023-08-23 10:00 → none |
| 30 | Совещание 1 | 2023-03-01 09:00 A → 2023-03-01 09:00 | 2023-03-01 10:00 A → 2023-03-01 10:00 |  | 100% → 0% |  |  | baseline start 2023-03-01 09:00 → none; baseline finish 2023-03-01 10:00 → none |
| 31 | Совещание 2 | 2023-03-08 09:00 A → 2023-03-08 09:00 | 2023-03-08 10:00 A → 2023-03-08 10:00 |  | 100% → 0% |  |  | baseline start 2023-03-08 09:00 → none; baseline finish 2023-03-08 10:00 → none |
| 32 | Совещание 3 | 2023-03-15 09:00 A → 2023-03-15 09:00 | 2023-03-15 10:00 A → 2023-03-15 10:00 |  | 100% → 0% |  |  | resources Web-дизайнер; Ведущий программист; Мультимедиа-корреспондент; Системный аналитик; Технический писатель; Художник-дизайнер → 3D аниматор; Web-дизайнер; Ведущий программист; Мультимедиа-корреспондент; Системный аналитик; Технический писатель; Художник-дизайнер; baseline start 2023-03-15 09:00 → none; baseline finish 2023-03-15 10:00 → none |
| 33 | Совещание 4 | 2023-03-22 09:00 A → 2023-03-22 09:00 | 2023-03-22 10:00 A → 2023-03-22 10:00 |  | 100% → 0% |  |  | resources Web-дизайнер; Ведущий программист; Мультимедиа-корреспондент; Системный аналитик; Технический писатель; Художник-дизайнер → 3D аниматор; Web-дизайнер; Ведущий программист; Мультимедиа-корреспондент; Системный аналитик; Технический писатель; Художник-дизайнер; baseline start 2023-03-22 09:00 → none; baseline finish 2023-03-22 10:00 → none |
| 34 | Совещание 5 | 2023-03-29 09:00 A → 2023-03-29 09:00 | 2023-03-29 10:00 A → 2023-03-29 10:00 |  | 100% → 0% |  |  | baseline start 2023-03-29 09:00 → none; baseline finish 2023-03-29 10:00 → none |
| 35 | Совещание 6 | 2023-04-05 09:00 A → 2023-04-05 09:00 | 2023-04-05 10:00 A → 2023-04-05 10:00 |  | 100% → 0% |  |  | baseline start 2023-04-05 09:00 → none; baseline finish 2023-04-05 10:00 → none |
| 36 | Совещание 7 | 2023-04-12 09:00 A → 2023-04-12 09:00 | 2023-04-12 10:00 A → 2023-04-12 10:00 |  | 100% → 0% |  |  | baseline start 2023-04-12 09:00 → none; baseline finish 2023-04-12 10:00 → none |
| 37 | Совещание 8 | 2023-04-19 09:00 A → 2023-04-19 09:00 | 2023-04-19 10:00 A → 2023-04-19 10:00 |  | 100% → 0% |  |  | baseline start 2023-04-19 09:00 → none; baseline finish 2023-04-19 10:00 → none |
| 38 | Совещание 9 | 2023-04-26 09:00 A → 2023-04-26 09:00 | 2023-04-26 10:00 A → 2023-04-26 10:00 |  | 100% → 0% |  |  | baseline start 2023-04-26 09:00 → none; baseline finish 2023-04-26 10:00 → none |
| 39 | Совещание 10 | 2023-05-03 09:00 A → 2023-05-03 09:00 | 2023-05-03 10:00 A → 2023-05-03 10:00 |  | 100% → 0% |  |  | baseline start 2023-05-03 09:00 → none; baseline finish 2023-05-03 10:00 → none |
| 40 | Совещание 11 |  |  |  |  |  |  | baseline start 2023-05-10 09:00 → none; baseline finish 2023-05-10 10:00 → none |
| 41 | Совещание 12 |  |  |  |  |  |  | baseline start 2023-05-17 09:00 → none; baseline finish 2023-05-17 10:00 → none |
| 42 | Совещание 13 |  |  |  |  |  |  | baseline start 2023-05-24 09:00 → none; baseline finish 2023-05-24 10:00 → none |
| 43 | Совещание 14 |  |  |  |  |  |  | baseline start 2023-05-31 09:00 → none; baseline finish 2023-05-31 10:00 → none |
| 44 | Совещание 15 |  |  |  |  |  |  | baseline start 2023-06-07 09:00 → none; baseline finish 2023-06-07 10:00 → none |
| 45 | Совещание 16 |  |  |  |  |  |  | baseline start 2023-06-14 09:00 → none; baseline finish 2023-06-14 10:00 → none |
| 46 | Совещание 17 |  |  |  |  |  |  | baseline start 2023-06-21 09:00 → none; baseline finish 2023-06-21 10:00 → none |
| 47 | Совещание 18 |  |  |  |  |  |  | baseline start 2023-06-28 09:00 → none; baseline finish 2023-06-28 10:00 → none |
| 48 | Совещание 19 |  |  |  |  |  |  | baseline start 2023-07-05 09:00 → none; baseline finish 2023-07-05 10:00 → none |
| 49 | Совещание 20 |  |  |  |  |  |  | baseline start 2023-07-12 09:00 → none; baseline finish 2023-07-12 10:00 → none |
| 50 | Совещание 21 |  |  |  |  |  |  | baseline start 2023-07-19 09:00 → none; baseline finish 2023-07-19 10:00 → none |
| 51 | Совещание 22 |  |  |  |  |  |  | baseline start 2023-07-26 09:00 → none; baseline finish 2023-07-26 10:00 → none |
| 52 | Совещание 23 |  |  |  |  |  |  | baseline start 2023-08-02 09:00 → none; baseline finish 2023-08-02 10:00 → none |
